# RHF Test Plan

Schedule from MS Project, 2013-03-12 to 2013-04-16.

## Calendars

- Standard: Mon-Fri 08:00-12:00, 13:00-17:00; Sat-Sun off.

## Resources

| Resource |
| --- |
| BichTT |
| NamNV |
| HungCQ |
| ChungNT |
| VietVH |

## Schedule

| ID | WBS | Task | Duration | Start | Finish | Predecessors | Total slack | Free slack | Constraint | Resources | Work |
| --- | --- | --- | --- | --- | --- | --- | --- | --- | --- | --- | --- |
| 1 | 1 | **RHF Test phase** | 26d? | 2013-03-12 | 2013-04-16 |  | 0d |  |  |  | 248h |
| 2 | 1.1 | **Write test case** | 9d? | 2013-03-12 | 2013-03-22 |  | 17d |  |  |  | 72h |
| 3 | 1.1.1 | Login/Logout | 1d | 2013-03-12 | 2013-03-12 |  | 4d | 0d |  | BichTT | 8h |
| 4 | 1.1.2 | User | 3d | 2013-03-13 | 2013-03-15 | 3 | 17d | 0d |  | BichTT | 24h |
| 5 | 1.1.3 | Create, view, edit post | 2d | 2013-03-18 | 2013-03-19 | 4 | 17d | 0d |  | BichTT | 16h |
| 6 | 1.1.4 | Admin page | 2d | 2013-03-20 | 2013-03-21 | 5 | 17d | 0d |  | BichTT | 16h |
| 7 | 1.1.5 | Q&A | 1d? | 2013-03-22 | 2013-03-22 | 6 | 17d |  |  | BichTT | 8h |
| 8 | 1.2 | **Execute test** | 8d | 2013-03-25 | 2013-04-03 |  | 9d |  |  |  | 80h |
| 9 | 1.2.1 | Login/Logout | 1d | 2013-03-25 | 2013-03-25 |  | 10.67d | 0d | start no earlier than 2013-03-25 | BichTT | 8h |
| 10 | 1.2.2 | User | 1.33d | 2013-03-26 | 2013-03-27 | 9 | 10.67d | 0d |  | BichTT; HungCQ; NamNV | 32h |
| 11 | 1.2.3 | Create, view, edit post | 2d | 2013-03-27 | 2013-03-29 | 10 | 1.67d | 0d |  | BichTT | 16h |
| 12 | 1.2.4 | Admin page | 2d | 2013-03-29 | 2013-04-02 | 11 | 1.67d |  |  | BichTT | 16h |
| 13 | 1.2.5 | Q & A | 1d | 2013-04-03 | 2013-04-03 |  | 17d |  | start no earlier than 2013-04-03 | BichTT | 8h |
| 14 | 1.3 | **Integration testing** | 6d | 2013-04-04 | 2013-04-11 |  | 3d |  |  |  | 48h |
| 15 | 1.3.1 | Admin | 3d | 2013-04-04 | 2013-04-08 |  | 11d | 0d | start no earlier than 2013-04-04 | BichTT | 24h |
| 16 | 1.3.2 | User | 3d | 2013-04-09 | 2013-04-11 | 15 | 11d |  |  | BichTT | 24h |
| 17 | 1.4 | System testing | 1d | 2013-03-12 | 2013-03-12 |  | 25d |  |  |  |  |
| 18 | 1.5 | **Acceptance testing** | 2d | 2013-04-15 | 2013-04-16 |  | 0d |  |  |  | 48h |
| 19 | 1.5.1 | Admin | 1d | 2013-04-15 | 2013-04-15 |  | 0d |  | start no earlier than 2013-04-15 | BichTT; NamNV; VietVH | 24h |
| 20 | 1.5.2 | User | 1d | 2013-04-16 | 2013-04-16 | 19 | 0d |  |  | BichTT; ChungNT; VietVH | 24h |
